# Fictional Project

Schedule from MS Project XML, 2022-10-24 to 2023-01-03, costs in $.

## Calendars

- Standard: Mon-Sat 08:00-12:00, 13:00-17:00; Sun off.

## Resources

| Resource | Rate |
| --- | --- |
| Pipe Fitter | 50 |
| Crane Operator | 200 |
| General Fitter | 30 |
| Inspector | 300 |
| Workshop Tech. | 150 |
| Welder | 400 |
| Operations | 1.25 |

## Schedule

| ID | WBS | Task | Duration | Start | Finish | Predecessors | Total slack | Free slack | Resources | Work | Cost |
| --- | --- | --- | --- | --- | --- | --- | --- | --- | --- | --- | --- |
| 1 | 1 | **Shutdown Project** | 61.5d | 2022-10-24 | 2023-01-03 |  | 0d |  |  | 14928h | 10,904.1 |
| 2 | 1.1 | Equiment Spadework 1 | 5.25d | 2022-10-24 | 2022-10-29 |  | 0.01d | 0d | General Fitter [609.52%] | 256h | 76.8 |
| 3 | 1.2 | Prep top cover and elbow / Manhole cover removal | 5.81d | 2022-10-29 | 2022-11-05 | 2 | 0.01d | 0d | Pipe Fitter [619.35%] | 288h | 144 |
| 4 | 1.3 | Lift Cover and elbow | 0.56d | 2022-11-05 | 2022-11-05 | 3 | 0.01d | 0d | Crane Operator |  |  |
| 5 | 1.4 | Remove demister | 2.62d | 2022-11-05 | 2022-11-09 | 4 | 0.01d | 0d | General Fitter [609.52%] | 128h | 38.4 |
| 6 | 1.5 | Set up ventilation | 1.31d | 2022-11-09 | 2022-11-10 | 5 | 0.01d | 0d | General Fitter [304.76%] | 32h | 9.6 |
| 7 | 1.6 | Gas test for CS entry | 0.56d | 2022-11-10 | 2022-11-11 | 6 | 0.01d | 0d | Inspector [177.78%] | 8h | 24 |
| 8 | 1.7 | Pre-cleaning inspection | 1.31d | 2022-11-11 | 2022-11-12 | 7 | 0.01d | 0d | Inspector [152.38%] | 16h | 48 |
| 9 | 1.8 | Clean Internal | 10.31d | 2022-11-12 | 2022-11-24 | 8 | 0.01d | 0d | Pipe Fitter [310.3%] | 256h | 128 |
| 10 | 1.9 | Post-cleaning inspection | 0.56d | 2022-11-24 | 2022-11-25 | 9 | 0.01d | 0d | Inspector [177.78%] | 8h | 24 |
| 11 | 1.1 | Replace demister with new | 2.62d | 2022-11-25 | 2022-11-28 | 10 | 0.01d | 0d | General Fitter [609.52%] | 128h | 38.4 |
| 12 | 1.11 | Powerbrush for UTG @ CML (HW) | 8d | 2022-11-12 | 2022-11-22 | 8 | 0.02d | 0d | General Fitter [200%] | 128h | 38.4 |
| 13 | 1.12 | UTG @ CML | 8d | 2022-11-22 | 2022-12-01 | 12 | 0.02d |  | Inspector | 64h | 192 |
| 14 | 1.13 | Lift top cover and elbow / manhole cover for reinstatement (Using Crane) | 1.25d | 2022-11-28 | 2022-11-30 | 11 | 0.01d | 0d | Crane Operator [160%] | 16h | 32 |
| 15 | 1.14 | Reinstate top cover and elbow / manhole cover / TFA | 8.94d | 2022-11-30 | 2022-12-10 | 14 | 0.01d | 0d | Pipe Fitter [626.57%] | 448h | 224 |
| 16 | 1.15 | Despade / TFA | 7.81d | 2022-12-10 | 2022-12-19 | 15 | 0.01d |  | Pipe Fitter [614.4%] | 384h | 192 |
| 17 | 1.16 | Remove NRV | 3d | 2022-10-24 | 2022-10-26 |  | 0.02d | 0d | Pipe Fitter [400%] | 96h | 48 |
| 18 | 1.17 | Overhaul/ Testing | 30d | 2022-10-27 | 2022-11-30 | 17 | 0.02d | 0d | Workshop Tech. | 240h | 360 |
| 19 | 1.18 | Inspection | 2d | 2022-12-01 | 2022-12-02 | 18 | 0.02d | 0d | Inspector | 16h | 48 |
| 20 | 1.19 | Reinstall NRV | 3d | 2022-12-03 | 2022-12-06 | 19 | 0.02d |  | Pipe Fitter [400%] | 96h | 48 |
| 21 | 1.2 | LOTO in, fuse out & cable out | 4.5d | 2022-10-24 | 2022-10-28 |  | 0d |  | General Fitter [800%] | 288h | 86.4 |
| 22 | 1.21 | Send to workshop | 2.5d | 2022-11-18 | 2022-11-21 | 24 | 0d |  | General Fitter [800%] | 160h | 48 |
| 23 | 1.22 | Spade in | 4.5d | 2022-10-28 | 2022-11-02 | 21 | 0d |  | Pipe Fitter [800%] | 288h | 144 |
| 24 | 1.23 | Remove pump | 9d | 2022-11-08 | 2022-11-18 | 25 | 0d |  | General Fitter [800%] | 576h | 172.8 |
| 25 | 1.24 | Decouple with motor | 4.5d | 2022-11-03 | 2022-11-08 | 23 | 0d |  | General Fitter [800%] | 288h | 86.4 |
| 26 | 1.25 | Overhaul at workshop | 16d | 2022-11-22 | 2022-12-09 | 22 | 0d |  | Workshop Tech. [200%] | 256h | 384 |
| 27 | 1.26 | Send back to site | 2.5d | 2022-12-10 | 2022-12-13 | 26 | 0d |  | General Fitter [800%] | 160h | 48 |
| 28 | 1.27 | Install pump | 4.5d | 2022-12-13 | 2022-12-17 | 27 | 0d |  | General Fitter [800%] | 288h | 86.4 |
| 29 | 1.28 | Alignment | 17.25d | 2022-12-13 | 2023-01-02 | 27 | 0d |  | General Fitter [626.09%] | 864h | 259.2 |
| 30 | 1.29 | Couple back with motor | 4.5d | 2022-12-19 | 2022-12-23 | 28 | 0d |  | General Fitter [800%] | 288h | 86.4 |
| 31 | 1.3 | Spade out | 4.5d | 2022-12-23 | 2022-12-28 | 30 | 0d |  | Pipe Fitter [800%] | 288h | 144 |
| 32 | 1.31 | Fuse in, LOTO out | 4.5d | 2022-12-29 | 2023-01-03 | 31 | 0d |  | General Fitter [800%] | 288h | 86.4 |
| 33 | 1.32 | Equiment Spadework 2 | 4d | 2022-10-24 | 2022-10-27 |  | 0.01d | 0d | Pipe Fitter [800%] | 256h | 128 |
| 34 | 1.33 | Prep top cover and elbow / Manhole cover removal | 4.5d | 2022-10-28 | 2022-11-02 | 33 | 0.01d | 0d | Pipe Fitter [800%] | 288h | 144 |
| 35 | 1.34 | Lift top cover and elbow / Manhole cover (Using Crane) | 0.5d | 2022-11-02 | 2022-11-02 | 34 | 0.01d | 0d | Crane Operator |  |  |
| 36 | 1.35 | Remove demister | 2d | 2022-11-03 | 2022-11-04 | 35 | 0.01d | 0d | General Fitter [800%] | 128h | 38.4 |
| 37 | 1.36 | Set up ventilation | 1d | 2022-11-05 | 2022-11-05 | 36 | 0.01d | 0d | General Fitter [400%] | 32h | 9.6 |
| 38 | 1.37 | Gas test for CS entry | 0.5d | 2022-11-07 | 2022-11-07 | 37 | 0.01d | 0d | Inspector [200%] | 8h | 24 |
| 39 | 1.38 | Pre-cleaning inspection | 1d | 2022-11-07 | 2022-11-08 | 38 | 0.01d | 0d | Inspector [200%] | 16h | 48 |
| 40 | 1.39 | Clean Internal | 8d | 2022-11-08 | 2022-11-17 | 39 | 0.01d | 0d | General Fitter [400%] | 256h | 76.8 |
| 41 | 1.4 | Post-cleaning inspection | 0.5d | 2022-11-17 | 2022-11-17 | 40 | 0.01d | 0d | Inspector [200%] | 8h | 24 |
| 42 | 1.41 | Replace demister with new | 2d | 2022-11-18 | 2022-11-19 | 41 | 0.01d | 0d | General Fitter [800%] | 128h | 38.4 |
| 43 | 1.42 | Powerbrush for UTG @ CML (HW) | 4d | 2022-11-21 | 2022-11-24 | 42 | 0.01d | 0d | General Fitter [400%] | 128h | 38.4 |
| 44 | 1.43 | UTG @ CML | 4d | 2022-11-25 | 2022-11-29 | 43 | 0.01d | 0d | Inspector [200%] | 64h | 192 |
| 45 | 1.44 | Lift top cover and elbow / manhole cover for reinstatement (Using Crane) | 1d | 2022-11-30 | 2022-11-30 | 44 | 0.01d | 0d | Crane Operator [200%] | 16h | 32 |
| 46 | 1.45 | Reinstate top cover and elbow / manhole cover / TFA | 7d | 2022-12-01 | 2022-12-08 | 45 | 0.01d | 0d | Pipe Fitter [800%] | 448h | 224 |
| 47 | 1.46 | Despade / TFA | 6d | 2022-12-09 | 2022-12-15 | 46 | 0.01d |  | Pipe Fitter [800%] | 384h | 192 |
| 48 | 1.47 | Equiment Spadework 3 | 5.12d | 2022-10-24 | 2022-10-29 |  | 0.01d | 0d | Pipe Fitter [624.39%] | 256h | 128 |
| 49 | 1.48 | Prep top cover and elbow / Manhole cover removal | 5.75d | 2022-10-29 | 2022-11-04 | 48 | 0.01d | 0d | Pipe Fitter [626.09%] | 288h | 144 |
| 50 | 1.49 | Lift top cover and elbow / Manhole cover (Using Crane) | 0.5d | 2022-11-04 | 2022-11-05 | 49 | 0.01d | 0d | Crane Operator [200%] | 8h | 16 |
| 51 | 1.5 | Remove demister | 2.56d | 2022-11-05 | 2022-11-08 | 50 | 0.01d | 0d | General Fitter [624.39%] | 128h | 38.4 |
| 52 | 1.51 | Set up ventilation | 1.12d | 2022-11-08 | 2022-11-10 | 51 | 0.01d | 0d | General Fitter [355.56%] | 32h | 9.6 |
| 53 | 1.52 | Gas test for CS entry | 0.5d | 2022-11-10 | 2022-11-10 | 52 | 0.01d | 0d | Inspector [200%] | 8h | 24 |
| 54 | 1.53 | Pre-cleaning inspection | 1.12d | 2022-11-10 | 2022-11-11 | 53 | 0.01d | 0d | Inspector [177.78%] | 16h | 48 |
| 55 | 1.54 | Clean Internal | 10.12d | 2022-11-11 | 2022-11-23 | 54 | 0.01d | 0d | General Fitter [316.05%] | 256h | 76.8 |
| 56 | 1.55 | Post-cleaning inspection | 0.5d | 2022-11-23 | 2022-11-24 | 55 | 0.01d | 0d | Inspector [200%] | 8h | 24 |
| 57 | 1.56 | Replace demister with new | 2.56d | 2022-11-24 | 2022-11-26 | 56 | 0.01d | 0d | General Fitter [624.39%] | 128h | 38.4 |
| 58 | 1.57 | Powerbrush for UTG @ CML (HW) | 5.12d | 2022-11-26 | 2022-12-02 | 57 | 0.01d | 0d | General Fitter [312.2%] | 128h | 38.4 |
| 59 | 1.58 | UTG @ CML | 5.12d | 2022-12-03 | 2022-12-09 | 58 | 0.01d | 0d | Inspector [156.1%] | 64h | 192 |
| 60 | 1.59 | Lift top cover and elbow / manhole cover for reinstatement (Using Crane) | 1.12d | 2022-12-09 | 2022-12-10 | 59 | 0.01d | 0d | Crane Operator [177.78%] | 16h | 32 |
| 61 | 1.6 | Reinstate top cover and elbow / manhole cover / TFA | 8.94d | 2022-12-10 | 2022-12-21 | 60 | 0.01d | 0d | Pipe Fitter [626.57%] | 448h | 224 |
| 62 | 1.61 | Despade / TFA | 7.62d | 2022-12-21 | 2022-12-29 | 61 | 0.01d |  | Pipe Fitter [629.51%] | 384h | 192 |
| 63 | 1.62 | [Add08]NDT/ Inspection | 2d | 2022-12-07 | 2022-12-09 | 64 | 0.02d |  | Inspector | 16h | 48 |
| 64 | 1.63 | [Add08]Hotwork to install new v/v | 18d | 2022-11-16 | 2022-12-07 | 65 | 0.02d | 0d | Welder [400%] | 576h | 2,304 |
| 65 | 1.64 | [Add08]Hotwork to remove N2 v/v (1" 1108Y) | 9d | 2022-11-05 | 2022-11-16 | 77 | 0.02d | 0d | Welder [400%] | 288h | 1,152 |
| 66 | 1.65 | Post clean inspection | 2d | 2022-12-09 | 2022-12-12 | 69 | 0.01d |  | Inspector | 16h | 48 |
| 67 | 1.66 | Handback | 0.5d | 2022-12-27 | 2022-12-28 | 78 | 0.01d |  | Operations [200%] | 8h | 0.1 |
| 68 | 1.67 | UTG CML | 4d | 2022-11-04 | 2022-11-09 | 75 | 0.02d |  | Inspector | 32h | 96 |
| 69 | 1.68 | Sulphide SCC Insp by MT | 2.19d | 2022-12-07 | 2022-12-09 | 70 | 0.01d | 0d | Inspector [137.14%] | 24h | 72 |
| 70 | 1.69 | Power brush on weld seam | 10.81d | 2022-11-24 | 2022-12-07 | 74 | 0.01d | 0d | General Fitter [554.91%] | 480h | 144 |

| ID | WBS | Task | Duration | Start | Finish | Predecessors | Total slack | Free slack | Resources | Work | Cost |
| --- | --- | --- | --- | --- | --- | --- | --- | --- | --- | --- | --- |
| 71 | 1.7 | [CRER] Remove sightglass, and replaced with magnetic Sightglass | 22d | 2022-11-24 | 2022-12-20 | 74 | 0.01d |  | Pipe Fitter [400%] | 704h | 352 |
| 72 | 1.71 | Boxup (incl TFA) | 6.5d | 2022-12-12 | 2022-12-20 | 73 | 0.01d | 0d | Pipe Fitter [553.85%] | 288h | 144 |
| 73 | 1.72 | Final Inspection | 2.19d | 2022-12-09 | 2022-12-12 | 69 | 0.01d | 0d | Inspector [274.29%] | 48h | 144 |
| 74 | 1.73 | Clean internal and clear all nozzle tappings and ease all isolation valves | 16d | 2022-11-05 | 2022-11-24 | 77 | 0.01d | 0d | General Fitter [550%] | 704h | 211.2 |
| 75 | 1.74 | Open end cover and clean | 4.38d | 2022-10-31 | 2022-11-04 | 76 | 0.01d | 0d | Pipe Fitter [548.57%] | 192h | 96 |
| 76 | 1.75 | Spade | 6.5d | 2022-10-24 | 2022-10-31 |  | 0.01d | 0d | Pipe Fitter [553.85%] | 288h | 144 |
| 77 | 1.76 | Preliminary inspection | 0.5d | 2022-11-04 | 2022-11-05 | 75 | 0.01d | 0d | Inspector [200%] | 8h | 24 |
| 78 | 1.77 | Despade + TFA | 6.5d | 2022-12-20 | 2022-12-27 | 72 | 0.01d | 0d | Pipe Fitter [553.85%] | 288h | 144 |
