# Fictional Project

Schedule from MS Project XML, 2022-10-24 to 2023-03-15, costs in $.

## Calendars

- Standard: Mon-Sat 08:00-12:00, 13:00-17:00; Sun off.

## Resources

| Resource | Rate |
| --- | --- |
| Pipe Fitter | 50 |
| Crane Operator | 200 |
| General Fitter | 30 |
| Inspector | 300 |
| Workshop Tech. | 150 |
| Welder | 400 |
| Operations | 1.25 |

## Schedule

| ID | WBS | Task | Duration | Start | Finish | Predecessors | Total slack | Free slack | Resources | Work | Cost |
| --- | --- | --- | --- | --- | --- | --- | --- | --- | --- | --- | --- |
| 1 | 1 | **Shutdown Project** | 123d | 2022-10-24 | 2023-03-15 |  | 0d |  |  | 14928h | 10,904.1 |
| 2 | 1.1 | Equiment Spadework 1 | 8d | 2022-10-24 | 2022-11-01 |  | 0.01d | 0d | General Fitter [400%] | 256h | 76.8 |
| 3 | 1.2 | Prep top cover and elbow / Manhole cover removal | 9d | 2022-11-02 | 2022-11-11 | 2 | 0.01d | 0d | Pipe Fitter [400%] | 288h | 144 |
| 4 | 1.3 | Lift Cover and elbow | 1d | 2022-11-12 | 2022-11-12 | 3 | 0.01d | 0d | Crane Operator |  |  |
| 5 | 1.4 | Remove demister | 4d | 2022-11-14 | 2022-11-17 | 4 | 0.01d | 0d | General Fitter [400%] | 128h | 38.4 |
| 6 | 1.5 | Set up ventilation | 2d | 2022-11-18 | 2022-11-19 | 5 | 0.01d | 0d | General Fitter [200%] | 32h | 9.6 |
| 7 | 1.6 | Gas test for CS entry | 1d | 2022-11-21 | 2022-11-21 | 6 | 0.01d | 0d | Inspector | 8h | 24 |
| 8 | 1.7 | Pre-cleaning inspection | 2d | 2022-11-22 | 2022-11-23 | 7 | 0.01d | 0d | Inspector | 16h | 48 |
| 9 | 1.8 | Clean Internal | 16d | 2022-11-24 | 2022-12-12 | 8 | 0.01d | 0d | Pipe Fitter [200%] | 256h | 128 |
| 10 | 1.9 | Post-cleaning inspection | 1d | 2022-12-13 | 2022-12-13 | 9 | 0.01d | 0d | Inspector | 8h | 24 |
| 11 | 1.1 | Replace demister with new | 4d | 2022-12-14 | 2022-12-17 | 10 | 0.01d | 0d | General Fitter [400%] | 128h | 38.4 |
| 12 | 1.11 | Powerbrush for UTG @ CML (HW) | 8d | 2022-11-24 | 2022-12-02 | 8 | 0.02d | 0d | General Fitter [200%] | 128h | 38.4 |
| 13 | 1.12 | UTG @ CML | 8d | 2022-12-03 | 2022-12-12 | 12 | 0.02d |  | Inspector | 64h | 192 |
| 14 | 1.13 | Lift top cover and elbow / manhole cover for reinstatement (Using Crane) | 2d | 2022-12-19 | 2022-12-20 | 11 | 0.01d | 0d | Crane Operator | 16h | 32 |
| 15 | 1.14 | Reinstate top cover and elbow / manhole cover / TFA | 14d | 2022-12-21 | 2023-01-05 | 14 | 0.01d | 0d | Pipe Fitter [400%] | 448h | 224 |
| 16 | 1.15 | Despade / TFA | 12d | 2023-01-06 | 2023-01-19 | 15 | 0.01d |  | Pipe Fitter [400%] | 384h | 192 |
| 17 | 1.16 | Remove NRV | 3d | 2022-10-24 | 2022-10-26 |  | 0.02d | 0d | Pipe Fitter [400%] | 96h | 48 |
| 18 | 1.17 | Overhaul/ Testing | 30d | 2022-10-27 | 2022-11-30 | 17 | 0.02d | 0d | Workshop Tech. | 240h | 360 |
| 19 | 1.18 | Inspection | 2d | 2022-12-01 | 2022-12-02 | 18 | 0.02d | 0d | Inspector | 16h | 48 |
| 20 | 1.19 | Reinstall NRV | 3d | 2022-12-03 | 2022-12-06 | 19 | 0.02d |  | Pipe Fitter [400%] | 96h | 48 |
| 21 | 1.2 | LOTO in, fuse out & cable out | 9d | 2022-10-24 | 2022-11-02 |  | 0d |  | General Fitter [400%] | 288h | 86.4 |
| 22 | 1.21 | Send to workshop | 5d | 2022-12-15 | 2022-12-20 | 24 | 0d |  | General Fitter [400%] | 160h | 48 |
| 23 | 1.22 | Spade in | 9d | 2022-11-03 | 2022-11-12 | 21 | 0d |  | Pipe Fitter [400%] | 288h | 144 |
| 24 | 1.23 | Remove pump | 18d | 2022-11-24 | 2022-12-14 | 25 | 0d |  | General Fitter [400%] | 576h | 172.8 |
| 25 | 1.24 | Decouple with motor | 9d | 2022-11-14 | 2022-11-23 | 23 | 0d |  | General Fitter [400%] | 288h | 86.4 |
| 26 | 1.25 | Overhaul at workshop | 32d | 2022-12-21 | 2023-01-26 | 22 | 0d |  | Workshop Tech. | 256h | 384 |
| 27 | 1.26 | Send back to site | 5d | 2023-01-27 | 2023-02-01 | 26 | 0d |  | General Fitter [400%] | 160h | 48 |
| 28 | 1.27 | Install pump | 9d | 2023-02-02 | 2023-02-11 | 27 | 0d |  | General Fitter [400%] | 288h | 86.4 |
| 29 | 1.28 | Alignment | 27d | 2023-02-02 | 2023-03-04 | 27 | 0d |  | General Fitter [400%] | 864h | 259.2 |
| 30 | 1.29 | Couple back with motor | 9d | 2023-02-13 | 2023-02-22 | 28 | 0d |  | General Fitter [400%] | 288h | 86.4 |
| 31 | 1.3 | Spade out | 9d | 2023-02-23 | 2023-03-04 | 30 | 0d |  | Pipe Fitter [400%] | 288h | 144 |
| 32 | 1.31 | Fuse in, LOTO out | 9d | 2023-03-06 | 2023-03-15 | 31 | 0d |  | General Fitter [400%] | 288h | 86.4 |
| 33 | 1.32 | Equiment Spadework 2 | 8d | 2022-10-24 | 2022-11-01 |  | 0.01d | 0d | Pipe Fitter [400%] | 256h | 128 |
| 34 | 1.33 | Prep top cover and elbow / Manhole cover removal | 9d | 2022-11-02 | 2022-11-11 | 33 | 0.01d | 0d | Pipe Fitter [400%] | 288h | 144 |
| 35 | 1.34 | Lift top cover and elbow / Manhole cover (Using Crane) | 1d | 2022-11-12 | 2022-11-12 | 34 | 0.01d | 0d | Crane Operator |  |  |
| 36 | 1.35 | Remove demister | 4d | 2022-11-14 | 2022-11-17 | 35 | 0.01d | 0d | General Fitter [400%] | 128h | 38.4 |
| 37 | 1.36 | Set up ventilation | 2d | 2022-11-18 | 2022-11-19 | 36 | 0.01d | 0d | General Fitter [200%] | 32h | 9.6 |
| 38 | 1.37 | Gas test for CS entry | 1d | 2022-11-21 | 2022-11-21 | 37 | 0.01d | 0d | Inspector | 8h | 24 |
| 39 | 1.38 | Pre-cleaning inspection | 2d | 2022-11-22 | 2022-11-23 | 38 | 0.01d | 0d | Inspector | 16h | 48 |
| 40 | 1.39 | Clean Internal | 16d | 2022-11-24 | 2022-12-12 | 39 | 0.01d | 0d | General Fitter [200%] | 256h | 76.8 |
| 41 | 1.4 | Post-cleaning inspection | 1d | 2022-12-13 | 2022-12-13 | 40 | 0.01d | 0d | Inspector | 8h | 24 |
| 42 | 1.41 | Replace demister with new | 4d | 2022-12-14 | 2022-12-17 | 41 | 0.01d | 0d | General Fitter [400%] | 128h | 38.4 |
| 43 | 1.42 | Powerbrush for UTG @ CML (HW) | 8d | 2022-12-19 | 2022-12-27 | 42 | 0.01d | 0d | General Fitter [200%] | 128h | 38.4 |
| 44 | 1.43 | UTG @ CML | 8d | 2022-12-28 | 2023-01-05 | 43 | 0.01d | 0d | Inspector | 64h | 192 |
| 45 | 1.44 | Lift top cover and elbow / manhole cover for reinstatement (Using Crane) | 2d | 2023-01-06 | 2023-01-07 | 44 | 0.01d | 0d | Crane Operator | 16h | 32 |
| 46 | 1.45 | Reinstate top cover and elbow / manhole cover / TFA | 14d | 2023-01-09 | 2023-01-24 | 45 | 0.01d | 0d | Pipe Fitter [400%] | 448h | 224 |
| 47 | 1.46 | Despade / TFA | 12d | 2023-01-25 | 2023-02-07 | 46 | 0.01d |  | Pipe Fitter [400%] | 384h | 192 |
| 48 | 1.47 | Equiment Spadework 3 | 8d | 2022-10-24 | 2022-11-01 |  | 0.01d | 0d | Pipe Fitter [400%] | 256h | 128 |
| 49 | 1.48 | Prep top cover and elbow / Manhole cover removal | 9d | 2022-11-02 | 2022-11-11 | 48 | 0.01d | 0d | Pipe Fitter [400%] | 288h | 144 |
| 50 | 1.49 | Lift top cover and elbow / Manhole cover (Using Crane) | 1d | 2022-11-12 | 2022-11-12 | 49 | 0.01d | 0d | Crane Operator | 8h | 16 |
| 51 | 1.5 | Remove demister | 4d | 2022-11-14 | 2022-11-17 | 50 | 0.01d | 0d | General Fitter [400%] | 128h | 38.4 |
| 52 | 1.51 | Set up ventilation | 2d | 2022-11-18 | 2022-11-19 | 51 | 0.01d | 0d | General Fitter [200%] | 32h | 9.6 |
| 53 | 1.52 | Gas test for CS entry | 1d | 2022-11-21 | 2022-11-21 | 52 | 0.01d | 0d | Inspector | 8h | 24 |
| 54 | 1.53 | Pre-cleaning inspection | 2d | 2022-11-22 | 2022-11-23 | 53 | 0.01d | 0d | Inspector | 16h | 48 |
| 55 | 1.54 | Clean Internal | 16d | 2022-11-24 | 2022-12-12 | 54 | 0.01d | 0d | General Fitter [200%] | 256h | 76.8 |
| 56 | 1.55 | Post-cleaning inspection | 1d | 2022-12-13 | 2022-12-13 | 55 | 0.01d | 0d | Inspector | 8h | 24 |
| 57 | 1.56 | Replace demister with new | 4d | 2022-12-14 | 2022-12-17 | 56 | 0.01d | 0d | General Fitter [400%] | 128h | 38.4 |
| 58 | 1.57 | Powerbrush for UTG @ CML (HW) | 8d | 2022-12-19 | 2022-12-27 | 57 | 0.01d | 0d | General Fitter [200%] | 128h | 38.4 |
| 59 | 1.58 | UTG @ CML | 8d | 2022-12-28 | 2023-01-05 | 58 | 0.01d | 0d | Inspector | 64h | 192 |
| 60 | 1.59 | Lift top cover and elbow / manhole cover for reinstatement (Using Crane) | 2d | 2023-01-06 | 2023-01-07 | 59 | 0.01d | 0d | Crane Operator | 16h | 32 |
| 61 | 1.6 | Reinstate top cover and elbow / manhole cover / TFA | 14d | 2023-01-09 | 2023-01-24 | 60 | 0.01d | 0d | Pipe Fitter [400%] | 448h | 224 |
| 62 | 1.61 | Despade / TFA | 12d | 2023-01-25 | 2023-02-07 | 61 | 0.01d |  | Pipe Fitter [400%] | 384h | 192 |
| 63 | 1.62 | [Add08]NDT/ Inspection | 2d | 2022-12-13 | 2022-12-14 | 64 | 0.02d |  | Inspector | 16h | 48 |
| 64 | 1.63 | [Add08]Hotwork to install new v/v | 18d | 2022-11-22 | 2022-12-12 | 65 | 0.02d | 0d | Welder [400%] | 576h | 2,304 |
| 65 | 1.64 | [Add08]Hotwork to remove N2 v/v (1" 1108Y) | 9d | 2022-11-11 | 2022-11-21 | 77 | 0.02d | 0d | Welder [400%] | 288h | 1,152 |
| 66 | 1.65 | Post clean inspection | 2d | 2022-12-28 | 2022-12-29 | 69 | 0.01d |  | Inspector | 16h | 48 |
| 67 | 1.66 | Handback | 1d | 2023-01-21 | 2023-01-21 | 78 | 0.01d |  | Operations | 8h | 0.1 |
| 68 | 1.67 | UTG CML | 4d | 2022-11-10 | 2022-11-14 | 75 | 0.02d |  | Inspector | 32h | 96 |
| 69 | 1.68 | Sulphide SCC Insp by MT | 3d | 2022-12-24 | 2022-12-27 | 70 | 0.01d | 0d | Inspector | 24h | 72 |
| 70 | 1.69 | Power brush on weld seam | 15d | 2022-12-07 | 2022-12-23 | 74 | 0.01d | 0d | General Fitter [400%] | 480h | 144 |

| ID | WBS | Task | Duration | Start | Finish | Predecessors | Total slack | Free slack | Resources | Work | Cost |
| --- | --- | --- | --- | --- | --- | --- | --- | --- | --- | --- | --- |
| 71 | 1.7 | [CRER] Remove sightglass, and replaced with magnetic Sightglass | 22d | 2022-12-07 | 2022-12-31 | 74 | 0.01d |  | Pipe Fitter [400%] | 704h | 352 |
| 72 | 1.71 | Boxup (incl TFA) | 9d | 2022-12-31 | 2023-01-10 | 73 | 0.01d | 0d | Pipe Fitter [400%] | 288h | 144 |
| 73 | 1.72 | Final Inspection | 3d | 2022-12-28 | 2022-12-30 | 69 | 0.01d | 0d | Inspector [200%] | 48h | 144 |
| 74 | 1.73 | Clean internal and clear all nozzle tappings and ease all isolation valves | 22d | 2022-11-11 | 2022-12-06 | 77 | 0.01d | 0d | General Fitter [400%] | 704h | 211.2 |
| 75 | 1.74 | Open end cover and clean | 6d | 2022-11-03 | 2022-11-09 | 76 | 0.01d | 0d | Pipe Fitter [400%] | 192h | 96 |
| 76 | 1.75 | Spade | 9d | 2022-10-24 | 2022-11-02 |  | 0.01d | 0d | Pipe Fitter [400%] | 288h | 144 |
| 77 | 1.76 | Preliminary inspection | 1d | 2022-11-10 | 2022-11-10 | 75 | 0.01d | 0d | Inspector | 8h | 24 |
| 78 | 1.77 | Despade + TFA | 9d | 2023-01-11 | 2023-01-20 | 72 | 0.01d | 0d | Pipe Fitter [400%] | 288h | 144 |
