# Fictional Project

Schedule from MS Project XML, 2022-10-24 to 2023-03-15, costs in $.

## Calendars

- Standard: Mon-Sat 08:00-12:00, 13:00-17:00; Sun off.

## Resources

| Resource | Rate |
| --- | --- |
| Pipe Fitter | 50 |
| Crane Operator | 200 |
| General Fitter | 30 |
| Inspector | 300 |
| Workshop Tech. | 150 |
| Welder | 400 |
| Operations | 1.25 |

## Schedule

| ID | WBS | Task | Duration | Start | Finish | Predecessors | Total slack | Free slack | Resources | Work | Cost |
| --- | --- | --- | --- | --- | --- | --- | --- | --- | --- | --- | --- |
| 1 | 0 | **Fictional Project** | 123d | 2022-10-24 | 2023-03-15 |  | 0d |  |  | 14928h | 10,904.1 |
| 2 | 1 | **Shutdown Project** | 123d | 2022-10-24 | 2023-03-15 |  | 0d |  |  | 14928h | 10,904.1 |
| 3 | 1.1 | Equiment Spadework 1 | 8d | 2022-10-24 | 2022-11-01 |  | 0.01d | 0d | General Fitter [400%] | 256h | 76.8 |
| 4 | 1.2 | Prep top cover and elbow / Manhole cover removal | 9d | 2022-11-02 | 2022-11-11 | 3 | 0.01d | 0d | Pipe Fitter [400%] | 288h | 144 |
| 5 | 1.3 | Lift Cover and elbow | 1d | 2022-11-12 | 2022-11-12 | 4 | 0.01d | 0d | Crane Operator |  |  |
| 6 | 1.4 | Remove demister | 4d | 2022-11-14 | 2022-11-17 | 5 | 0.01d | 0d | General Fitter [400%] | 128h | 38.4 |
| 7 | 1.5 | Set up ventilation | 2d | 2022-11-18 | 2022-11-19 | 6 | 0.01d | 0d | General Fitter [200%] | 32h | 9.6 |
| 8 | 1.6 | Gas test for CS entry | 1d | 2022-11-21 | 2022-11-21 | 7 | 0.01d | 0d | Inspector | 8h | 24 |
| 9 | 1.7 | Pre-cleaning inspection | 2d | 2022-11-22 | 2022-11-23 | 8 | 0.01d | 0d | Inspector | 16h | 48 |
| 10 | 1.8 | Clean Internal | 16d | 2022-11-24 | 2022-12-12 | 9 | 0.01d | 0d | Pipe Fitter [200%] | 256h | 128 |
| 11 | 1.9 | Post-cleaning inspection | 1d | 2022-12-13 | 2022-12-13 | 10 | 0.01d | 0d | Inspector | 8h | 24 |
| 12 | 1.1 | Replace demister with new | 4d | 2022-12-14 | 2022-12-17 | 11 | 0.01d | 0d | General Fitter [400%] | 128h | 38.4 |
| 13 | 1.11 | Powerbrush for UTG @ CML (HW) | 8d | 2022-11-24 | 2022-12-02 | 9 | 0.02d | 0d | General Fitter [200%] | 128h | 38.4 |
| 14 | 1.12 | UTG @ CML | 8d | 2022-12-03 | 2022-12-12 | 13 | 0.02d |  | Inspector | 64h | 192 |
| 15 | 1.13 | Lift top cover and elbow / manhole cover for reinstatement (Using Crane) | 2d | 2022-12-19 | 2022-12-20 | 12 | 0.01d | 0d | Crane Operator | 16h | 32 |
| 16 | 1.14 | Reinstate top cover and elbow / manhole cover / TFA | 14d | 2022-12-21 | 2023-01-05 | 15 | 0.01d | 0d | Pipe Fitter [400%] | 448h | 224 |
| 17 | 1.15 | Despade / TFA | 12d | 2023-01-06 | 2023-01-19 | 16 | 0.01d |  | Pipe Fitter [400%] | 384h | 192 |
| 18 | 1.16 | Remove NRV | 3d | 2022-10-24 | 2022-10-26 |  | 0.02d | 0d | Pipe Fitter [400%] | 96h | 48 |
| 19 | 1.17 | Overhaul/ Testing | 30d | 2022-10-27 | 2022-11-30 | 18 | 0.02d | 0d | Workshop Tech. | 240h | 360 |
| 20 | 1.18 | Inspection | 2d | 2022-12-01 | 2022-12-02 | 19 | 0.02d | 0d | Inspector | 16h | 48 |
| 21 | 1.19 | Reinstall NRV | 3d | 2022-12-03 | 2022-12-06 | 20 | 0.02d |  | Pipe Fitter [400%] | 96h | 48 |
| 22 | 1.2 | LOTO in, fuse out & cable out | 9d | 2022-10-24 | 2022-11-02 |  | 0d |  | General Fitter [400%] | 288h | 86.4 |
| 23 | 1.21 | Send to workshop | 5d | 2022-12-15 | 2022-12-20 | 25 | 0d |  | General Fitter [400%] | 160h | 48 |
| 24 | 1.22 | Spade in | 9d | 2022-11-03 | 2022-11-12 | 22 | 0d |  | Pipe Fitter [400%] | 288h | 144 |
| 25 | 1.23 | Remove pump | 18d | 2022-11-24 | 2022-12-14 | 26 | 0d |  | General Fitter [400%] | 576h | 172.8 |
| 26 | 1.24 | Decouple with motor | 9d | 2022-11-14 | 2022-11-23 | 24 | 0d |  | General Fitter [400%] | 288h | 86.4 |
| 27 | 1.25 | Overhaul at workshop | 32d | 2022-12-21 | 2023-01-26 | 23 | 0d |  | Workshop Tech. | 256h | 384 |
| 28 | 1.26 | Send back to site | 5d | 2023-01-27 | 2023-02-01 | 27 | 0d |  | General Fitter [400%] | 160h | 48 |
| 29 | 1.27 | Install pump | 9d | 2023-02-02 | 2023-02-11 | 28 | 0d |  | General Fitter [400%] | 288h | 86.4 |
| 30 | 1.28 | Alignment | 27d | 2023-02-02 | 2023-03-04 | 28 | 0d |  | General Fitter [400%] | 864h | 259.2 |
| 31 | 1.29 | Couple back with motor | 9d | 2023-02-13 | 2023-02-22 | 29 | 0d |  | General Fitter [400%] | 288h | 86.4 |
| 32 | 1.3 | Spade out | 9d | 2023-02-23 | 2023-03-04 | 31 | 0d |  | Pipe Fitter [400%] | 288h | 144 |
| 33 | 1.31 | Fuse in, LOTO out | 9d | 2023-03-06 | 2023-03-15 | 32 | 0d |  | General Fitter [400%] | 288h | 86.4 |
| 34 | 1.32 | Equiment Spadework 2 | 8d | 2022-10-24 | 2022-11-01 |  | 0.01d | 0d | Pipe Fitter [400%] | 256h | 128 |
| 35 | 1.33 | Prep top cover and elbow / Manhole cover removal | 9d | 2022-11-02 | 2022-11-11 | 34 | 0.01d | 0d | Pipe Fitter [400%] | 288h | 144 |
| 36 | 1.34 | Lift top cover and elbow / Manhole cover (Using Crane) | 1d | 2022-11-12 | 2022-11-12 | 35 | 0.01d | 0d | Crane Operator |  |  |
| 37 | 1.35 | Remove demister | 4d | 2022-11-14 | 2022-11-17 | 36 | 0.01d | 0d | General Fitter [400%] | 128h | 38.4 |
| 38 | 1.36 | Set up ventilation | 2d | 2022-11-18 | 2022-11-19 | 37 | 0.01d | 0d | General Fitter [200%] | 32h | 9.6 |
| 39 | 1.37 | Gas test for CS entry | 1d | 2022-11-21 | 2022-11-21 | 38 | 0.01d | 0d | Inspector | 8h | 24 |
| 40 | 1.38 | Pre-cleaning inspection | 2d | 2022-11-22 | 2022-11-23 | 39 | 0.01d | 0d | Inspector | 16h | 48 |
| 41 | 1.39 | Clean Internal | 16d | 2022-11-24 | 2022-12-12 | 40 | 0.01d | 0d | General Fitter [200%] | 256h | 76.8 |
| 42 | 1.4 | Post-cleaning inspection | 1d | 2022-12-13 | 2022-12-13 | 41 | 0.01d | 0d | Inspector | 8h | 24 |
| 43 | 1.41 | Replace demister with new | 4d | 2022-12-14 | 2022-12-17 | 42 | 0.01d | 0d | General Fitter [400%] | 128h | 38.4 |
| 44 | 1.42 | Powerbrush for UTG @ CML (HW) | 8d | 2022-12-19 | 2022-12-27 | 43 | 0.01d | 0d | General Fitter [200%] | 128h | 38.4 |
| 45 | 1.43 | UTG @ CML | 8d | 2022-12-28 | 2023-01-05 | 44 | 0.01d | 0d | Inspector | 64h | 192 |
| 46 | 1.44 | Lift top cover and elbow / manhole cover for reinstatement (Using Crane) | 2d | 2023-01-06 | 2023-01-07 | 45 | 0.01d | 0d | Crane Operator | 16h | 32 |
| 47 | 1.45 | Reinstate top cover and elbow / manhole cover / TFA | 14d | 2023-01-09 | 2023-01-24 | 46 | 0.01d | 0d | Pipe Fitter [400%] | 448h | 224 |
| 48 | 1.46 | Despade / TFA | 12d | 2023-01-25 | 2023-02-07 | 47 | 0.01d |  | Pipe Fitter [400%] | 384h | 192 |
| 49 | 1.47 | Equiment Spadework 3 | 8d | 2022-10-24 | 2022-11-01 |  | 0.01d | 0d | Pipe Fitter [400%] | 256h | 128 |
| 50 | 1.48 | Prep top cover and elbow / Manhole cover removal | 9d | 2022-11-02 | 2022-11-11 | 49 | 0.01d | 0d | Pipe Fitter [400%] | 288h | 144 |
| 51 | 1.49 | Lift top cover and elbow / Manhole cover (Using Crane) | 1d | 2022-11-12 | 2022-11-12 | 50 | 0.01d | 0d | Crane Operator | 8h | 16 |
| 52 | 1.5 | Remove demister | 4d | 2022-11-14 | 2022-11-17 | 51 | 0.01d | 0d | General Fitter [400%] | 128h | 38.4 |
| 53 | 1.51 | Set up ventilation | 2d | 2022-11-18 | 2022-11-19 | 52 | 0.01d | 0d | General Fitter [200%] | 32h | 9.6 |
| 54 | 1.52 | Gas test for CS entry | 1d | 2022-11-21 | 2022-11-21 | 53 | 0.01d | 0d | Inspector | 8h | 24 |
| 55 | 1.53 | Pre-cleaning inspection | 2d | 2022-11-22 | 2022-11-23 | 54 | 0.01d | 0d | Inspector | 16h | 48 |
| 56 | 1.54 | Clean Internal | 16d | 2022-11-24 | 2022-12-12 | 55 | 0.01d | 0d | General Fitter [200%] | 256h | 76.8 |
| 57 | 1.55 | Post-cleaning inspection | 1d | 2022-12-13 | 2022-12-13 | 56 | 0.01d | 0d | Inspector | 8h | 24 |
| 58 | 1.56 | Replace demister with new | 4d | 2022-12-14 | 2022-12-17 | 57 | 0.01d | 0d | General Fitter [400%] | 128h | 38.4 |
| 59 | 1.57 | Powerbrush for UTG @ CML (HW) | 8d | 2022-12-19 | 2022-12-27 | 58 | 0.01d | 0d | General Fitter [200%] | 128h | 38.4 |
| 60 | 1.58 | UTG @ CML | 8d | 2022-12-28 | 2023-01-05 | 59 | 0.01d | 0d | Inspector | 64h | 192 |
| 61 | 1.59 | Lift top cover and elbow / manhole cover for reinstatement (Using Crane) | 2d | 2023-01-06 | 2023-01-07 | 60 | 0.01d | 0d | Crane Operator | 16h | 32 |
| 62 | 1.6 | Reinstate top cover and elbow / manhole cover / TFA | 14d | 2023-01-09 | 2023-01-24 | 61 | 0.01d | 0d | Pipe Fitter [400%] | 448h | 224 |
| 63 | 1.61 | Despade / TFA | 12d | 2023-01-25 | 2023-02-07 | 62 | 0.01d |  | Pipe Fitter [400%] | 384h | 192 |
| 64 | 1.62 | [Add08]NDT/ Inspection | 2d | 2022-12-13 | 2022-12-14 | 65 | 0.02d |  | Inspector | 16h | 48 |
| 65 | 1.63 | [Add08]Hotwork to install new v/v | 18d | 2022-11-22 | 2022-12-12 | 66 | 0.02d | 0d | Welder [400%] | 576h | 2,304 |
| 66 | 1.64 | [Add08]Hotwork to remove N2 v/v (1" 1108Y) | 9d | 2022-11-11 | 2022-11-21 | 78 | 0.02d | 0d | Welder [400%] | 288h | 1,152 |
| 67 | 1.65 | Post clean inspection | 2d | 2022-12-28 | 2022-12-29 | 70 | 0.01d |  | Inspector | 16h | 48 |
| 68 | 1.66 | Handback | 1d | 2023-01-21 | 2023-01-21 | 79 | 0.01d |  | Operations | 8h | 0.1 |
| 69 | 1.67 | UTG CML | 4d | 2022-11-10 | 2022-11-14 | 76 | 0.02d |  | Inspector | 32h | 96 |
| 70 | 1.68 | Sulphide SCC Insp by MT | 3d | 2022-12-24 | 2022-12-27 | 71 | 0.01d | 0d | Inspector | 24h | 72 |

| ID | WBS | Task | Type | Duration | Start | Finish | Predecessors | Total slack | Free slack | Resources | Work | Cost |
| --- | --- | --- | --- | --- | --- | --- | --- | --- | --- | --- | --- | --- |
| 71 | 1.69 | Power brush on weld seam |  | 15d | 2022-12-07 | 2022-12-23 | 75 | 0.01d | 0d | General Fitter [400%] | 480h | 144 |
| 72 | 1.7 | [CRER] Remove sightglass, and replaced with magnetic Sightglass |  | 22d | 2022-12-07 | 2022-12-31 | 75 | 0.01d |  | Pipe Fitter [400%] | 704h | 352 |
| 73 | 1.71 | Boxup (incl TFA) |  | 9d | 2022-12-31 | 2023-01-10 | 74 | 0.01d | 0d | Pipe Fitter [400%] | 288h | 144 |
| 74 | 1.72 | Final Inspection |  | 3d | 2022-12-28 | 2022-12-30 | 70 | 0.01d | 0d | Inspector [200%] | 48h | 144 |
| 75 | 1.73 | Clean internal and clear all nozzle tappings and ease all isolation valves |  | 22d | 2022-11-11 | 2022-12-06 | 78 | 0.01d | 0d | General Fitter [400%] | 704h | 211.2 |
| 76 | 1.74 | Open end cover and clean |  | 6d | 2022-11-03 | 2022-11-09 | 77 | 0.01d | 0d | Pipe Fitter [400%] | 192h | 96 |
| 77 | 1.75 | Spade |  | 9d | 2022-10-24 | 2022-11-02 |  | 0.01d | 0d | Pipe Fitter [400%] | 288h | 144 |
| 78 | 1.76 | Preliminary inspection |  | 1d | 2022-11-10 | 2022-11-10 | 76 | 0.01d | 0d | Inspector | 8h | 24 |
| 79 | 1.77 | Despade + TFA |  | 9d | 2023-01-11 | 2023-01-20 | 73 | 0.01d | 0d | Pipe Fitter [400%] | 288h | 144 |
| 80 | 195 | Assembling | manual | 40h | 2022-10-24 | 2022-10-25 |  |  |  |  |  |  |
| 81 | 196 | Bracing | manual | 40h | 2022-10-29 | 2022-10-30 | 80FS+1.25d |  |  |  |  |  |
| 82 | 197 | Cementing | manual | 40h | 2022-11-03 | 2022-11-04 | 80FS+2.5d, 81FS+1.25d |  |  |  |  |  |
| 83 | 198 | Demolition | manual | 40h | 2022-10-24 | 2022-10-25 |  |  |  |  |  |  |
| 84 | 199 | Excavating | manual | 40h | 2022-10-29 | 2022-10-30 | 83FS+1.25d |  |  |  |  |  |
| 85 | 200 | Framing | manual | 40h | 2022-11-03 | 2022-11-04 | 83FS+2.5d, 84FS+1.25d |  |  |  |  |  |
